# Cronograma de aplicação

Schedule from MS Project, 2015-04-23 to 2015-06-25, costs in R$, A marks actual dates.

## Calendars

- Padrão: Mon-Fri 09:00-12:00, 13:00-18:00; Sat-Sun off.

## Resources

| Resource | Rate |
| --- | --- |
| Davi | 40 |
| Cristopher | 40 |
| Pedro | 40 |
| Vinicius | 40 |
| Outro Grupo |  |
| Professor |  |

## Schedule

| ID | WBS | Task | Duration | Start | Finish | Predecessors | Complete | Remaining | Total slack | Resources | Work | Actual work | Cost | Actual cost |
| --- | --- | --- | --- | --- | --- | --- | --- | --- | --- | --- | --- | --- | --- | --- |
| 1 | 1 | **Projeto locadora de jogos** | 46d? | 2015-04-23 09:00 A | 2015-06-25 18:00 |  | 76% | 10.97d? | 0d |  | 1425h | 1097h | 56,000 | 43,200 |
| 2 | 1.1 | **Prospecção** | 1.88d | 2015-04-23 09:00 A | 2015-04-24 17:00 A |  | 100% |  |  |  | 49h | 49h | 1,960 | 1,960 |
| 3 | 1.1.1 | **Reunião** | 0.88d | 2015-04-23 09:00 A | 2015-04-23 17:00 A |  | 100% |  |  |  | 20h | 20h | 800 | 800 |
| 4 | 1.1.1.1 | Confirmar Reunião | 1h | 2015-04-23 09:00 A | 2015-04-23 10:00 A |  | 100% |  |  | Davi | 1h | 1h | 40 | 40 |
| 5 | 1.1.1.2 | Criar Ata de Reunião | 1h | 2015-04-23 10:00 A | 2015-04-23 11:00 A | 4 | 100% |  |  | Cristopher | 1h | 1h | 40 | 40 |
| 6 | 1.1.1.3 | Definir Metas | 1h | 2015-04-23 11:00 A | 2015-04-23 12:00 A | 5 | 100% |  |  | Pedro | 1h | 1h | 40 | 40 |
| 7 | 1.1.1.4 | Planejar reunião | 1h | 2015-04-23 11:00 A | 2015-04-23 12:00 A | 6SS | 100% |  |  | Vinicius | 1h | 1h | 40 | 40 |
| 8 | 1.1.1.5 | Realisar a Reunião | 4h | 2015-04-23 13:00 A | 2015-04-23 17:00 A | 7 | 100% |  |  | Cristopher; Davi; Pedro; Vinicius | 16h | 16h | 640 | 640 |
| 9 | 1.1.2 | **Estudar área de Aplicação** | 1d | 2015-04-23 17:00 A | 2015-04-24 17:00 A | 3 | 100% |  |  |  | 29h | 29h | 1,160 | 1,160 |
| 10 | 1.1.2.1 | Pesquisar sobre campo de aplicação | 4h | 2015-04-23 17:00 A | 2015-04-24 12:00 A |  | 100% |  |  | Cristopher; Davi; Pedro; Vinicius | 16h | 16h | 640 | 640 |
| 11 | 1.1.2.2 | Separar áreas de Aplicação po Topicos | 1h | 2015-04-24 13:00 A | 2015-04-24 14:00 A | 10 | 100% |  |  | Davi | 1h | 1h | 40 | 40 |
| 12 | 1.1.2.3 | Realisar Pesquisas | 3h | 2015-04-24 14:00 A | 2015-04-24 17:00 A | 11 | 100% |  |  | Cristopher; Davi; Pedro; Vinicius | 12h | 12h | 480 | 480 |
| 13 | 1.2 | **Analise** | 7.25d? | 2015-04-24 17:00 A | 2015-05-06 10:00 A | 2 | 100% |  |  |  | 220h | 220h | 8,120 | 8,120 |
| 14 | 1.2.1 | **Criar Proposta Técnica** | 1.38d | 2015-04-24 17:00 A | 2015-04-28 11:00 A |  | 100% |  |  |  | 41h | 41h | 1,640 | 1,640 |
| 15 | 1.2.1.1 | Realisar BrainStorm | 2h | 2015-04-24 17:00 A | 2015-04-27 10:00 A |  | 100% |  |  | Cristopher; Davi; Pedro; Vinicius | 8h | 8h | 320 | 320 |
| 16 | 1.2.1.2 | Dividir Desenvolvimento de Criação de Requisitos e Relatório | 1h | 2015-04-27 10:00 A | 2015-04-27 11:00 A | 15 | 100% |  |  | Cristopher | 1h | 1h | 40 | 40 |
| 17 | 1.2.1.3 | Criar Requisitos | 4h | 2015-04-27 11:00 A | 2015-04-27 16:00 A | 16 | 100% |  |  | Cristopher; Davi; Pedro; Vinicius | 16h | 16h | 640 | 640 |
| 18 | 1.2.1.4 | Juntar e Revisar Documento Final | 4h | 2015-04-27 16:00 A | 2015-04-28 11:00 A | 17 | 100% |  |  | Cristopher; Davi; Pedro; Vinicius | 16h | 16h | 640 | 640 |
| 19 | 1.2.2 | **Criar Documento de Requisito** | 2.62d | 2015-04-28 11:00 A | 2015-04-30 17:00 A | 14 | 100% |  |  |  | 63h | 63h | 2,320 | 2,320 |
| 20 | 1.2.2.1 | Realisar BrainStorm | 2h | 2015-04-28 11:00 A | 2015-04-28 14:00 A |  | 100% |  |  | Cristopher; Davi; Pedro; Vinicius | 8h | 8h | 320 | 320 |
| 21 | 1.2.2.2 | Criar Plano de Ação | 1h | 2015-04-28 14:00 A | 2015-04-28 15:00 A | 20 | 100% |  |  | Pedro | 1h | 1h | 40 | 40 |
| 22 | 1.2.2.3 | Dividir Tarefas | 1h | 2015-04-28 15:00 A | 2015-04-28 16:00 A | 21 | 100% |  |  | Vinicius | 1h | 1h | 40 | 40 |
| 23 | 1.2.2.4 | Elicitar Requisitos e Relatórios | 1d | 2015-04-28 16:00 A | 2015-04-29 16:00 A | 22 | 100% |  |  | Cristopher; Davi; Pedro; Vinicius | 32h | 32h | 1,280 | 1,280 |
| 24 | 1.2.2.5 | Reunião para junção do Documento | 4h | 2015-04-29 16:00 A | 2015-04-30 11:00 A | 23 | 100% |  |  | Cristopher; Davi; Pedro; Vinicius | 16h | 16h | 640 | 640 |
| 25 | 1.2.2.6 | Fazer o CheckList do documento final | 5h | 2015-04-30 11:00 A | 2015-04-30 17:00 A | 24 | 100% |  |  | Outro Grupo | 5h | 5h |  |  |

| ID | WBS | Task | Duration | Start | Finish | Predecessors | Complete | Remaining | Total slack | Resources | Work | Actual work | Cost | Actual cost |
| --- | --- | --- | --- | --- | --- | --- | --- | --- | --- | --- | --- | --- | --- | --- |
| 26 | 1.2.3 | **Realisar Eatimativa de Tamanho** | 0.75d | 2015-04-30 17:00 A | 2015-05-01 15:00 A | 19 | 100% |  |  |  | 24h | 24h | 960 | 960 |
| 27 | 1.2.3.1 | Fazer BrainStorm | 2h | 2015-04-30 17:00 A | 2015-05-01 10:00 A |  | 100% |  |  | Cristopher; Davi; Pedro; Vinicius | 8h | 8h | 320 | 320 |
| 28 | 1.2.3.2 | Criar Estimativa de Tamanho | 4h | 2015-05-01 10:00 A | 2015-05-01 15:00 A | 27 | 100% |  |  | Vinicius; Cristopher; Davi; Pedro | 16h | 16h | 640 | 640 |
| 29 | 1.2.4 | Criar Matriz de Rastreabilidade | 1d? | 2015-05-01 15:00 A | 2015-05-04 15:00 A | 26 | 100% |  |  | Cristopher; Davi; Outro Grupo; Pedro; Vinicius | 40h | 40h | 1,280 | 1,280 |
| 30 | 1.2.5 | **Aprovar Projeto** | 1.5d? | 2015-05-04 15:00 A | 2015-05-06 10:00 A | 29 | 100% |  |  |  | 52h | 52h | 1,920 | 1,920 |
| 31 | 1.2.5.1 | Realisar BrainStorm com Cliente | 4h | 2015-05-04 15:00 A | 2015-05-05 10:00 A |  | 100% |  |  | Cristopher; Davi; Pedro; Professor; Vinicius | 20h | 20h | 640 | 640 |
| 32 | 1.2.5.2 | Aguardar Aprovação do Cliente | 1d? | 2015-05-05 10:00 A | 2015-05-06 10:00 A | 31 | 100% |  |  | Cristopher; Davi; Pedro; Vinicius | 32h | 32h | 1,280 | 1,280 |
| 33 | 1.3 | **Planejamento** | 3.88d? | 2015-05-06 10:00 A | 2015-05-11 18:00 A | 13 | 100% |  |  |  | 124h | 124h | 4,960 | 4,960 |
| 34 | 1.3.1 | **Criar EAP** | 1.25d | 2015-05-06 10:00 A | 2015-05-07 12:00 A |  | 100% |  |  |  | 40h | 40h | 1,600 | 1,600 |
| 35 | 1.3.1.1 | Realisar BrainStorm | 2h | 2015-05-06 10:00 A | 2015-05-06 12:00 A |  | 100% |  |  | Cristopher; Davi; Pedro; Vinicius | 8h | 8h | 320 | 320 |
| 36 | 1.3.1.2 | Criar Documento | 4h | 2015-05-06 13:00 A | 2015-05-06 17:00 A | 35 | 100% |  |  | Cristopher; Davi; Pedro; Vinicius | 16h | 16h | 640 | 640 |
| 37 | 1.3.1.3 | Revisar Documento Final | 4h | 2015-05-06 17:00 A | 2015-05-07 12:00 A | 36 | 100% |  |  | Cristopher; Davi; Pedro; Vinicius | 16h | 16h | 640 | 640 |
| 38 | 1.3.2 | **Fazer Cronograma de Orçamento** | 1.62d? | 2015-05-07 13:00 A | 2015-05-08 18:00 A | 34 | 100% |  |  |  | 52h | 52h | 2,080 | 2,080 |
| 39 | 1.3.2.1 | Realisar BrainStorm | 2h | 2015-05-07 13:00 A | 2015-05-07 15:00 A |  | 100% |  |  | Cristopher; Davi; Pedro; Vinicius | 8h | 8h | 320 | 320 |
| 40 | 1.3.2.2 | Criar Documentação | 1d? | 2015-05-07 15:00 A | 2015-05-08 15:00 A | 39 | 100% |  |  | Cristopher; Davi; Pedro; Vinicius | 32h | 32h | 1,280 | 1,280 |
| 41 | 1.3.2.3 | Revisar Documentação | 3h | 2015-05-08 15:00 A | 2015-05-08 18:00 A | 40 | 100% |  |  | Cristopher; Davi; Pedro; Vinicius | 12h | 12h | 480 | 480 |
| 42 | 1.3.3 | Criar Eatimativa de Tamanho | 1d? | 2015-05-11 09:00 A | 2015-05-11 18:00 A | 38 | 100% |  |  | Cristopher; Davi; Pedro; Vinicius | 32h | 32h | 1,280 | 1,280 |
| 43 | 1.4 | **Modelagem** | 1d | 2015-05-12 09:00 A | 2015-05-12 18:00 A | 33 | 100% |  |  |  | 32h | 32h | 1,280 | 1,280 |
| 44 | 1.4.1 | Criar Diagrama UML | 4h | 2015-05-12 09:00 A | 2015-05-12 14:00 A |  | 100% |  |  | Cristopher; Davi; Pedro; Vinicius | 16h | 16h | 640 | 640 |
| 45 | 1.4.2 | Criar Plano de Modelagem | 4h | 2015-05-12 14:00 A | 2015-05-12 18:00 A | 44 | 100% |  |  | Cristopher; Davi; Pedro; Vinicius | 16h | 16h | 640 | 640 |
| 46 | 1.5 | **Implementação/ Teste** | 28d? | 2015-05-13 09:00 A | 2015-06-19 18:00 | 43 | 75% | 7d? | 0d |  | 896h | 672h | 35,840 | 26,880 |
| 47 | 1.5.1 | Implementar CRU's 1 e 2 | 7d? | 2015-05-13 09:00 A | 2015-05-21 18:00 A |  | 100% |  |  | Cristopher; Davi; Pedro; Vinicius | 224h | 224h | 8,960 | 8,960 |
| 48 | 1.5.2 | Implementar CRU's 3 e 4 | 7d? | 2015-05-22 09:00 A | 2015-06-01 18:00 A | 47 | 100% |  |  | Cristopher; Davi; Pedro; Vinicius | 224h | 224h | 8,960 | 8,960 |
| 49 | 1.5.3 | Implementar CRU's 5 e 6 | 7d | 2015-06-02 09:00 A | 2015-06-10 18:00 A | 48 | 100% |  |  | Cristopher; Davi; Pedro; Vinicius | 224h | 224h | 8,960 | 8,960 |
| 50 | 1.5.4 | Implementar CRU's 7 e 8 e Relatórios | 7d | 2015-06-11 09:00 | 2015-06-19 18:00 | 49 |  |  | 0d | Cristopher; Davi; Pedro; Vinicius | 224h |  | 8,960 |  |

| ID | WBS | Task | Duration | Start | Finish | Predecessors | Total slack | Resources | Work | Cost |
| --- | --- | --- | --- | --- | --- | --- | --- | --- | --- | --- |
| 51 | 1.6 | **Encerramento** | 4d? | 2015-06-22 09:00 | 2015-06-25 18:00 | 46 | 0d |  | 104h | 3,840 |
| 52 | 1.6.1 | Aprovar projeto | 1d? | 2015-06-22 09:00 | 2015-06-22 18:00 |  | 0d | Professor | 8h |  |
| 53 | 1.6.2 | Instalar Software | 1d? | 2015-06-23 09:00 | 2015-06-23 18:00 | 52 | 0d | Cristopher; Davi; Pedro; Vinicius | 32h | 1,280 |
| 54 | 1.6.3 | Criar Documento de Homologação | 1d? | 2015-06-24 09:00 | 2015-06-24 18:00 | 53 | 0d | Cristopher; Davi; Pedro; Vinicius | 32h | 1,280 |
| 55 | 1.6.4 | Fazer análise PostMortem | 1d? | 2015-06-25 09:00 | 2015-06-25 18:00 | 54 | 0d | Cristopher; Davi; Pedro; Vinicius | 32h | 1,280 |
